# Made vol

Schedule from MS Project, 2019-12-12 to 2022-12-12, 7 hours a day, costs in €, A marks actual dates.

## Calendars

- Standard: Mon-Fri 09:00-12:00, 14:00-18:00; Sat-Sun off.

## Resources

| Resource | Group | Rate |
| --- | --- | --- |
| Melvin Ecole | Equipe alternance | 12.22 |
| Maxime Ecole | Equipe alternance | 12.22 |
| Maximilien Ecole | Equipe alternance | 12.22 |
| Dev 1 | Equipe temps plein | 30 |
| Dev 2 | Equipe temps plein | 30 |
| Dev 3 | Equipe temps plein | 30 |
| Barbara Ecole | Equipe alternance | 12.22 |

## Schedule

| ID | WBS | Task | Type | Duration | Start | Finish | Predecessors | Complete | Remaining | Baseline start | Baseline finish | Baseline duration | Total slack | Constraint | Resources | Work | Actual work | Cost | Baseline cost | Actual cost | Durée disponble | Text2 |
| --- | --- | --- | --- | --- | --- | --- | --- | --- | --- | --- | --- | --- | --- | --- | --- | --- | --- | --- | --- | --- | --- | --- |
| 1 | 1 | Début projet | milestone, manual | 0d | 2019-12-12 | 2019-12-12 |  |  |  | 2019-12-12 | 2019-12-12 | 0d |  |  |  |  |  |  |  |  |  |  |
| 2 | 2 | **Projet MADERA** |  | 783d | 2019-12-12 A | 2022-12-12 |  | 8% | 722.66d | 2019-12-12 | 2022-12-12 | 783d | 0d |  |  | 4258h | 165h | 101,692.3 | 101,692.3 | 2,016.3 |  |  |
| 3 | 2.1 | **Reformulation du besoin** |  | 5d | 2019-12-12 A | 2019-12-18 A | 1 | 100% |  | 2019-12-12 | 2019-12-18 | 5d |  |  |  | 36h | 36h | 439.92 | 439.92 | 439.92 | 20 jours |  |
| 4 | 2.1.1 | Recueillir et reformuler le besoin |  | 6d | 2019-12-12 A | 2019-12-14 A |  | 100% |  | 2019-12-12 | 2019-12-14 | 6d |  |  | Maxime Ecole [20%]; Maximilien Ecole [20%]; Melvin Ecole [20%]; Barbara Ecole [20%] | 20h | 20h | 244.4 | 244.4 | 244.4 |  |  |
| 5 | 2.1.2 | Réaliser la "Fiche projet" |  | 4d | 2019-12-14 A | 2019-12-15 A | 4 | 100% |  | 2019-12-14 | 2019-12-15 | 4d |  |  | Melvin Ecole [20%] | 5h | 5h | 61.1 | 61.1 | 61.1 |  |  |
| 6 | 2.1.3 | Réaliser le "Macro-planning" |  | 4d | 2019-12-14 A | 2019-12-18 A | 4 | 100% |  | 2019-12-14 | 2019-12-18 | 4d |  |  | Maxime Ecole [20%] | 5h | 5h | 61.1 | 61.1 | 61.1 |  |  |
| 7 | 2.1.4 | Rédaction du livrable |  | 5d | 2019-12-14 A | 2019-12-17 A |  | 100% |  | 2019-12-14 | 2019-12-17 | 5d |  |  | Maximilien Ecole [20%] | 6h | 6h | 73.32 | 73.32 | 73.32 |  |  |
| 8 | 2.2 | GO / NO GO : Livrable 0 | milestone, manual | 0d | 2020-01-10 A | 2020-01-10 A | 3 | 100% |  | 2020-01-10 | 2020-01-10 | 0d |  |  |  |  |  |  |  |  |  |  |
| 9 | 2.3 | **Objectifs et stratégies** |  | 86d | 2020-01-10 A | 2020-05-09 A | 8 | 100% |  | 2020-01-10 | 2020-05-09 | 86d |  |  |  | 129h | 129h | 1,576.38 | 1,576.38 | 1,576.38 | 100 jours |  |
| 10 | 2.3.1 | **Gestion du système documentaire** |  | 2.43d | 2020-01-10 A | 2020-01-14 A |  | 100% |  | 2020-01-10 | 2020-01-14 | 2.43d |  |  |  | 19h | 19h | 232.18 | 232.18 | 232.18 |  |  |
| 11 | 2.3.1.1 | Définir la structure de l'équipe |  | 5d | 2020-01-10 A | 2020-01-11 A |  | 100% |  | 2020-01-10 | 2020-01-11 | 5d |  | must start on 2020-01-10 | Melvin Ecole [20%] | 4h | 4h | 48.88 | 48.88 | 48.88 |  | Vincent |
| 12 | 2.3.1.2 | Définir un mode de stockage des documents |  | 5d | 2020-01-13 A | 2020-01-14 A |  | 100% |  | 2020-01-13 | 2020-01-14 | 5d |  |  | Melvin Ecole [20%] | 4h | 4h | 48.88 | 48.88 | 48.88 |  |  |
| 13 | 2.3.1.3 | Etablir la stratégie de versionning |  | 5d | 2020-01-10 A | 2020-01-13 A |  | 100% |  | 2020-01-10 | 2020-01-13 | 5d |  |  | Barbara Ecole [20%] | 5h | 5h | 61.1 | 61.1 | 61.1 |  |  |
| 14 | 2.3.1.4 | Rédiger la configuration |  | 4.43d | 2020-01-11 A | 2020-01-12 A |  | 100% |  | 2020-01-11 | 2020-01-12 | 4.43d |  |  | Melvin Ecole [20%]; Maximilien Ecole [20%] | 6h | 6h | 73.32 | 73.32 | 73.32 |  |  |
| 15 | 2.3.2 | **Analyse fonctionnelle** |  | 81d | 2020-01-10 A | 2020-05-04 A |  | 100% |  | 2020-01-10 | 2020-05-04 | 81d |  |  |  | 94h | 94h | 1,148.68 | 1,148.68 | 1,148.68 |  |  |
| 16 | 2.3.2.1 | Rédiger l'analyse fonctionnelle |  | 12d | 2020-01-10 A | 2020-01-13 A |  | 100% |  | 2020-01-10 | 2020-01-15 | 15d |  |  | Maxime Ecole [20%]; Maximilien Ecole [20%]; Barbara Ecole [20%] | 12h | 12h | 146.64 | 146.64 | 146.64 |  |  |
| 17 | 2.3.2.2 | Établir le PBS (Breakdown Structure Software) |  | 8d | 2020-01-27 A | 2020-01-29 A |  | 100% |  | 2020-01-10 | 2020-01-13 | 9.24d |  |  | Maxime Ecole [20%]; Melvin Ecole [20%] | 10h | 10h | 122.2 | 122.2 | 122.2 |  |  |
| 18 | 2.3.2.3 | Établir le WBS ((Work Breakdown Structure)) |  | 8d | 2020-02-17 A | 2020-02-19 A | 17 | 100% |  | 2020-03-11 | 2020-03-13 | 8d |  | start no earlier than 2020-03-11 | Maximilien Ecole [20%]; Barbara Ecole [20%] | 20h | 20h | 244.4 | 244.4 | 244.4 |  |  |
| 19 | 2.3.2.4 | Déterminer les parties prenantes |  | 4d | 2020-03-30 A | 2020-03-31 A |  | 100% |  | 2020-03-30 | 2020-03-31 | 4d |  | start no earlier than 2020-03-30 | Maxime Ecole [20%] | 5h | 5h | 61.1 | 61.1 | 61.1 |  |  |
| 20 | 2.3.2.5 | Établir le planning prévisionnel |  | 14d | 2020-04-06 A | 2020-04-10 A | 18 | 100% |  | 2020-04-06 | 2020-04-10 | 14d |  | start no earlier than 2020-04-06 | Melvin Ecole [20%]; Barbara Ecole [20%]; Maxime Ecole [20%] | 22h | 22h | 268.84 | 268.84 | 268.84 |  |  |
| 21 | 2.3.2.6 | Définir les risques |  | 14d | 2020-04-30 A | 2020-05-04 A |  | 100% |  | 2020-04-30 | 2020-05-04 | 14d |  | start no earlier than 2020-04-30 | Maxime Ecole [20%]; Melvin Ecole [20%] | 20h | 20h | 244.4 | 244.4 | 244.4 |  |  |
| 22 | 2.3.2.7 | Choisir les indicateurs |  | 4d | 2020-04-15 A | 2020-04-16 A |  | 100% |  | 2020-04-15 | 2020-04-16 | 4d |  | start no earlier than 2020-04-15 | Maximilien Ecole [20%] | 5h | 5h | 61.1 | 61.1 | 61.1 |  |  |
| 23 | 2.3.3 | Rédaction du livrable |  | 12d | 2020-05-01 A | 2020-05-09 A |  | 100% |  | 2020-05-01 | 2020-05-09 | 12d |  | start no earlier than 2020-05-01 | Barbara Ecole [20%]; Maximilien Ecole [20%] | 16h | 16h | 195.52 | 195.52 | 195.52 |  |  |
| 24 | 2.4 | GO / NO GO : Livrable 1 | milestone, manual | 0d | 2020-05-29 A | 2020-05-29 A | 9 | 100% |  | 2020-05-29 | 2020-05-29 | 0d |  |  |  |  |  |  |  |  |  |  |

| ID | WBS | Task | Type | Duration | Start | Finish | Predecessors | Baseline start | Baseline finish | Baseline duration | Total slack | Free slack | Constraint | Resources | Work | Cost | Baseline cost | Durée disponble |
| --- | --- | --- | --- | --- | --- | --- | --- | --- | --- | --- | --- | --- | --- | --- | --- | --- | --- | --- |
| 25 | 2.5 | **Architecture, ergonomie et traitements** |  | 86d | 2020-05-29 | 2020-09-25 | 24 | 2020-05-29 | 2020-09-25 | 86d | 576d |  |  |  | 268h | 3,274.96 | 3,274.96 | 95 jours |
| 26 | 2.5.1 | Définir le contrôle de saisies / données |  | 11d | 2020-06-07 | 2020-06-13 |  | 2020-06-07 | 2020-06-13 | 11d | 651d |  |  | Melvin Ecole [20%]; Maximilien Ecole [20%] | 14h | 171.08 | 171.08 |  |
| 27 | 2.5.2 | Choisir la méthode de développement |  | 12d | 2020-05-29 | 2020-06-08 |  | 2020-05-29 | 2020-06-08 | 12d | 655d |  |  | Maxime Ecole [20%]; Melvin Ecole [20%]; Maximilien Ecole [20%]; Barbara Ecole [20%] | 16h | 195.52 | 195.52 |  |
| 28 | 2.5.3 | **Modéliser la BDD** |  | 12d | 2020-05-29 | 2020-06-16 |  | 2020-05-29 | 2020-06-16 | 12d | 650d |  |  |  | 80h | 977.6 | 977.6 |  |
| 29 | 2.5.3.1 | UML |  | 30d | 2020-05-29 | 2020-06-07 |  | 2020-05-29 | 2020-06-07 | 30d | 656d |  |  | Maxime Ecole [20%]; Maximilien Ecole [20%]; Melvin Ecole [20%] | 60h | 733.2 | 733.2 |  |
| 30 | 2.5.3.2 | MERISE |  | 20d | 2020-06-08 | 2020-06-16 |  | 2020-06-08 | 2020-06-16 | 20d | 649.57d |  |  | Melvin Ecole [20%]; Maximilien Ecole [20%] | 20h | 244.4 | 244.4 |  |
| 31 | 2.5.4 | **Réaliser les mockups** |  | 9.43d | 2020-05-29 | 2020-06-11 |  | 2020-05-29 | 2020-06-11 | 9.43d | 652.57d |  |  |  | 60h | 733.2 | 733.2 |  |
| 32 | 2.5.4.1 | Définir l'ergonomie |  | 45d | 2020-05-29 | 2020-06-11 |  | 2020-05-29 | 2020-06-11 | 45d | 652.57d |  |  | Barbara Ecole [20%] | 30h | 366.6 | 366.6 |  |
| 33 | 2.5.4.2 | Définir l'interface (IHM) |  | 45d | 2020-05-29 | 2020-06-11 |  | 2020-05-29 | 2020-06-11 | 45d | 652.57d |  |  | Maximilien Ecole [20%] | 30h | 366.6 | 366.6 |  |
| 34 | 2.5.5 | **Définir l'environnement de développement** |  | 8d | 2020-06-07 | 2020-06-17 |  | 2020-06-07 | 2020-06-17 | 8d | 648d |  |  |  | 26h | 317.72 | 317.72 |  |
| 35 | 2.5.5.1 | Choisir les langages (Analyse du marché actuel) |  | 16d | 2020-06-11 | 2020-06-17 |  | 2020-06-11 | 2020-06-17 | 16d | 647.57d |  |  | Melvin Ecole [20%]; Maximilien Ecole [20%] | 16h | 195.52 | 195.52 |  |
| 36 | 2.5.5.2 | Choix de l'hébergement (Analyse du marché actuel) |  | 10d | 2020-06-07 | 2020-06-10 |  | 2020-06-07 | 2020-06-10 | 10d | 654d |  |  | Maxime Ecole [20%] | 10h | 122.2 | 122.2 |  |
| 37 | 2.5.6 | **Argumenter le choix des outils par critères, coûts et ressources** |  | 3d | 2020-09-09 | 2020-09-13 |  | 2020-09-09 | 2020-09-13 | 3d | 586d |  |  |  | 32h | 391.04 | 391.04 |  |
| 38 | 2.5.6.1 | Etude des outils de développement |  | 7.57d | 2020-09-09 | 2020-09-11 |  | 2020-09-09 | 2020-09-11 | 7.57d | 587d |  | start no earlier than 2020-09-09 | Maxime Ecole [20%]; Melvin Ecole [20%]; Maximilien Ecole [20%]; Barbara Ecole [20%] | 16h | 195.52 | 195.52 |  |
| 39 | 2.5.6.2 | Etude des outils de BDD |  | 14d | 2020-09-09 | 2020-09-13 |  | 2020-09-09 | 2020-09-13 | 14d | 586d |  | start no earlier than 2020-09-09 | Maxime Ecole [20%]; Melvin Ecole [20%]; Maximilien Ecole [20%]; Barbara Ecole [20%] | 16h | 195.52 | 195.52 |  |
| 40 | 2.5.7 | Rédaction du livrable |  | 15d | 2020-09-21 | 2020-09-25 |  | 2020-09-21 | 2020-09-25 | 15d | 576d |  | start no earlier than 2020-09-21 | Melvin Ecole [20%]; Maximilien Ecole [20%] | 40h | 488.8 | 488.8 |  |
| 41 | 2.6 | GO / NO GO : Livrable 2 | milestone, manual | 0d | 2020-10-09 | 2020-10-09 |  | 2020-10-09 | 2020-10-09 | 0d |  |  |  |  |  |  |  |  |
| 42 | 2.7 | **Prototypage** |  | 36d | 2020-10-09 | 2020-11-30 | 41 | 2020-10-09 | 2020-11-30 | 36d | 190d |  |  |  | 550h | 6,721 | 6,721 | 131 jours |
| 43 | 2.7.1 | **Établir un budget prévisionnel** |  | 21d | 2020-10-09 | 2020-11-09 |  | 2020-10-09 | 2020-11-09 | 21d | 197.79d | 10d |  |  | 112h | 1,368.64 | 1,368.64 |  |
| 44 | 2.7.1.1 | Investissement |  | 20d | 2020-10-09 | 2020-10-15 |  | 2020-10-09 | 2020-10-15 | 20d | 197.43d | 0d |  | Barbara Ecole [20%]; Maxime Ecole [20%] | 28h | 342.16 | 342.16 |  |
| 45 | 2.7.1.2 | Charges |  | 28d | 2020-10-15 | 2020-10-23 | 44 | 2020-10-15 | 2020-10-23 | 28d | 197.43d | 0d |  | Melvin Ecole [20%]; Maximilien Ecole [20%] | 28h | 342.16 | 342.16 |  |
| 46 | 2.7.1.3 | Coûts humains |  | 37.71d | 2020-10-23 | 2020-11-03 | 45 | 2020-10-23 | 2020-11-03 | 37.71d | 197.79d | 0d |  | Melvin Ecole [20%]; Barbara Ecole [20%] | 28h | 342.16 | 342.16 |  |
| 47 | 2.7.1.4 | Coûts internes/externes |  | 20d | 2020-11-03 | 2020-11-09 | 46 | 2020-11-03 | 2020-11-09 | 20d | 199d |  |  | Maximilien Ecole [20%] | 28h | 342.16 | 342.16 |  |
| 48 | 2.7.2 | **Sécurisation du projet** |  | 9.29d | 2020-10-27 | 2020-11-10 |  | 2020-10-27 | 2020-11-10 | 9.29d | 198.14d | 8.71d |  |  | 42h | 513.24 | 513.24 |  |
| 49 | 2.7.2.1 | Plan d'assurance qualité |  | 10d | 2020-11-07 | 2020-11-10 |  | 2020-11-07 | 2020-11-10 | 10d | 196.5d |  |  | Maxime Ecole [20%] | 14h | 171.08 | 171.08 |  |
| 50 | 2.7.2.2 | Gestion des risques |  | 20d | 2020-10-27 | 2020-11-04 |  | 2020-10-27 | 2020-11-04 | 20d | 202d |  |  | Melvin Ecole [20%]; Maximilien Ecole [20%] | 28h | 342.16 | 342.16 |  |

| ID | WBS | Task | Type | Duration | Start | Finish | Predecessors | Baseline start | Baseline finish | Baseline duration | Total slack | Free slack | Resources | Work | Cost | Baseline cost |
| --- | --- | --- | --- | --- | --- | --- | --- | --- | --- | --- | --- | --- | --- | --- | --- | --- |
| 51 | 2.7.3 | **Développer le prototype** |  | 31d | 2020-10-09 | 2020-11-23 |  | 2020-10-09 | 2020-11-23 | 31d | 189.43d | 0d |  | 361h | 4,411.42 | 4,411.42 |
| 52 | 2.7.3.1 | **Module "conception de devis"** |  | 26d | 2020-10-09 | 2020-11-15 |  | 2020-10-09 | 2020-11-15 | 26d | 189d |  |  | 256h | 3,128.32 | 3,128.32 |
| 53 | 2.7.3.1.1 | **IHM** |  | 23d | 2020-10-11 | 2020-11-12 |  | 2020-10-11 | 2020-11-12 | 23d | 190.93d | 2d |  | 100h | 1,222 | 1,222 |
| 54 | 2.7.3.1.1.1 | Interface des commerciaux |  | 70d | 2020-10-11 | 2020-11-12 |  | 2020-10-11 | 2020-11-12 | 70d | 190.93d |  | Maximilien Ecole [20%]; Maxime Ecole [20%] | 70h | 855.4 | 855.4 |
| 55 | 2.7.3.1.1.2 | Interface de connexion |  | 22d | 2020-10-12 | 2020-10-18 |  | 2020-10-12 | 2020-10-18 | 22d | 209d |  | Barbara Ecole [20%]; Melvin Ecole [20%] | 30h | 366.6 | 366.6 |
| 56 | 2.7.3.1.2 | **Traitements** |  | 26d | 2020-10-09 | 2020-11-15 |  | 2020-10-09 | 2020-11-15 | 26d | 189d | 0d |  | 156h | 1,906.32 | 1,906.32 |
| 57 | 2.7.3.1.2.1 | Authentification |  | 12d | 2020-10-18 | 2020-10-22 |  | 2020-10-18 | 2020-10-22 | 12d | 205.93d |  | Melvin Ecole [20%] | 15h | 183.3 | 183.3 |
| 58 | 2.7.3.1.2.2 | **Projet** |  | 7.57d | 2020-10-25 | 2020-11-04 |  | 2020-10-25 | 2020-11-04 | 7.57d | 196.43d |  |  | 42h | 513.24 | 513.24 |
| 59 | 2.7.3.1.2.2.1 | Création |  | 8d | 2020-10-25 | 2020-10-27 |  | 2020-10-25 | 2020-10-27 | 8d | 202d |  | Maxime Ecole [20%] | 10h | 122.2 | 122.2 |
| 60 | 2.7.3.1.2.2.2 | Modification |  | 12d | 2020-10-27 | 2020-10-31 |  | 2020-10-27 | 2020-10-31 | 12d | 198.93d |  | Maxime Ecole [20%] | 15h | 183.3 | 183.3 |
| 61 | 2.7.3.1.2.2.3 | Suppression |  | 5d | 2020-10-31 | 2020-11-01 |  | 2020-10-31 | 2020-11-01 | 5d | 198d |  | Maxime Ecole [20%] | 7h | 85.54 | 85.54 |
| 62 | 2.7.3.1.2.2.4 | Lecture |  | 10d | 2020-11-01 | 2020-11-04 |  | 2020-11-01 | 2020-11-04 | 10d | 196d |  | Maxime Ecole [20%] | 10h | 122.2 | 122.2 |
| 63 | 2.7.3.1.2.3 | **Devis** |  | 26d | 2020-10-09 | 2020-11-15 |  | 2020-10-09 | 2020-11-15 | 26d | 189d |  |  | 59h | 720.98 | 720.98 |
| 64 | 2.7.3.1.2.3.1 | Création |  | 8d | 2020-10-09 | 2020-10-11 |  | 2020-10-09 | 2020-10-11 | 8d | 213d |  | Maximilien Ecole [20%] | 10h | 122.2 | 122.2 |
| 65 | 2.7.3.1.2.3.2 | Modification |  | 12d | 2020-11-12 | 2020-11-15 |  | 2020-11-12 | 2020-11-15 | 12d | 187.93d |  | Maximilien Ecole [20%] | 15h | 183.3 | 183.3 |
| 66 | 2.7.3.1.2.3.3 | Suppression |  | 5d | 2020-10-23 | 2020-10-24 |  | 2020-10-23 | 2020-10-24 | 5d | 204d |  | Maximilien Ecole [20%] | 7h | 85.54 | 85.54 |
| 67 | 2.7.3.1.2.3.4 | Lecture |  | 10d | 2020-10-24 | 2020-10-27 |  | 2020-10-24 | 2020-10-27 | 10d | 201d |  | Maximilien Ecole [20%] | 10h | 122.2 | 122.2 |
| 68 | 2.7.3.1.2.3.5 | Envoi au fournisseur |  | 10d | 2020-10-18 | 2020-10-21 |  | 2020-10-18 | 2020-10-21 | 10d | 206d |  | Barbara Ecole [20%] | 10h | 122.2 | 122.2 |
| 69 | 2.7.3.1.2.3.6 | Imprimer |  | 5d | 2020-10-21 | 2020-10-22 |  | 2020-10-21 | 2020-10-22 | 5d | 205.14d |  | Barbara Ecole [20%] | 7h | 85.54 | 85.54 |
| 70 | 2.7.3.1.2.4 | Fonction de lecture des modules |  | 10d | 2020-10-22 | 2020-10-25 |  | 2020-10-22 | 2020-10-25 | 10d | 202.14d |  | Barbara Ecole [20%] | 12h | 146.64 | 146.64 |
| 71 | 2.7.3.1.2.5 | Fonction de lecture des composants |  | 10d | 2020-11-04 | 2020-11-07 |  | 2020-11-04 | 2020-11-07 | 10d | 193.43d |  | Maxime Ecole [20%] | 14h | 171.08 | 171.08 |
| 72 | 2.7.3.1.2.6 | Fonction de lecture des gammes |  | 10d | 2020-10-09 | 2020-10-12 |  | 2020-10-09 | 2020-10-12 | 10d | 212d |  | Melvin Ecole [20%] | 14h | 171.08 | 171.08 |
| 73 | 2.7.3.2 | Mettre en place la base de données |  | 35d | 2020-10-22 | 2020-11-08 |  | 2020-10-22 | 2020-11-08 | 35d | 198.2d |  | Melvin Ecole [20%] | 35h | 427.7 | 427.7 |
| 74 | 2.7.3.3 | Scénario de test |  | 25d | 2020-11-15 | 2020-11-23 | 53, 56 | 2020-11-15 | 2020-11-23 | 25d | 189d |  | Melvin Ecole [20%]; Maximilien Ecole [20%] | 70h | 855.4 | 855.4 |
| 75 | 2.7.4 | Rédaction du livrable |  | 25d | 2020-11-23 | 2020-11-30 | 51, 43, 48 | 2020-11-23 | 2020-11-30 | 25d | 189.43d | 95d | Barbara Ecole [20%] | 35h | 427.7 | 427.7 |
| 76 | 2.8 | GO / NO GO : Livrable 3 | milestone, manual | 0d | 2021-04-12 | 2021-04-12 | 75 | 2021-04-12 | 2021-04-12 | 0d |  |  |  |  |  |  |

| ID | WBS | Task | Type | Duration | Start | Finish | Predecessors | Baseline start | Baseline finish | Baseline duration | Total slack | Free slack | Resources | Work | Cost | Baseline cost | Durée disponble |
| --- | --- | --- | --- | --- | --- | --- | --- | --- | --- | --- | --- | --- | --- | --- | --- | --- | --- |
| 77 | 2.9 | **Synthèse** |  | 30d | 2021-04-12 | 2021-05-23 | 76 | 2021-04-12 | 2021-05-23 | 30d | 81.5d | 27d |  | 482h | 5,890.04 | 5,890.04 | 57 jours |
| 78 | 2.9.1 | **Rapport final** |  | 18.36d | 2021-04-12 | 2021-05-06 |  | 2021-04-12 | 2021-05-06 | 18.36d | 81.64d | 0d |  | 302h | 3,690.44 | 3,690.44 |  |
| 79 | 2.9.1.1 | Établir le plan de management du projet |  | 25d | 2021-04-12 | 2021-04-19 |  | 2021-04-12 | 2021-04-19 | 25d | 94.29d |  | Melvin Ecole [20%] | 35h | 427.7 | 427.7 |  |
| 80 | 2.9.1.2 | Justifier les choix technologiques et les stratégies retenues |  | 15d | 2021-04-12 | 2021-04-16 |  | 2021-04-12 | 2021-04-16 | 15d | 95d |  | Barbara Ecole [20%] | 20h | 244.4 | 244.4 |  |
| 81 | 2.9.1.3 | Établir la politique de sécurisation |  | 15d | 2021-04-12 | 2021-04-16 |  | 2021-04-12 | 2021-04-16 | 15d | 95d |  | Maxime Ecole [20%]; Maximilien Ecole [20%] | 40h | 488.8 | 488.8 |  |
| 82 | 2.9.1.4 | Établir le plan de sauvegarde des données |  | 13d | 2021-05-02 | 2021-05-06 |  | 2021-05-02 | 2021-05-06 | 13d | 81d |  | Melvin Ecole [20%]; Barbara Ecole [20%] | 20h | 244.4 | 244.4 |  |
| 83 | 2.9.1.5 | Établir le plan de restauration des données |  | 15d | 2021-04-18 | 2021-04-23 |  | 2021-04-18 | 2021-04-23 | 15d | 90.93d |  | Maximilien Ecole [20%] | 15h | 183.3 | 183.3 |  |
| 84 | 2.9.1.6 | Établir une traçabilité des données |  | 20d | 2021-04-18 | 2021-04-24 |  | 2021-04-18 | 2021-04-24 | 20d | 90d |  | Barbara Ecole [20%] | 15h | 183.3 | 183.3 |  |
| 85 | 2.9.1.7 | Rédiger le descriptif des outils pour la maintenance |  | 20d | 2021-04-21 | 2021-04-26 |  | 2021-04-21 | 2021-04-26 | 20d | 88d |  | Melvin Ecole [20%] | 25h | 305.5 | 305.5 |  |
| 86 | 2.9.1.8 | Établir le plan de déploiement |  | 15d | 2021-04-24 | 2021-04-28 |  | 2021-04-24 | 2021-04-28 | 15d | 85.93d |  | Maxime Ecole [20%] | 20h | 244.4 | 244.4 |  |
| 87 | 2.9.1.9 | Établir le plan de gestion de changement |  | 12.86d | 2021-04-28 | 2021-05-03 |  | 2021-04-28 | 2021-05-03 | 12.86d | 82.86d |  | Maxime Ecole [20%]; Barbara Ecole [20%]; Melvin Ecole [20%] | 15h | 183.3 | 183.3 |  |
| 88 | 2.9.1.10 | Établir le plan de communication |  | 15d | 2021-04-26 | 2021-05-01 |  | 2021-04-26 | 2021-05-01 | 15d | 84.93d |  | Melvin Ecole [20%] | 20h | 244.4 | 244.4 |  |
| 89 | 2.9.1.11 | Établir le plan de formation des utilisateurs |  | 20d | 2021-04-24 | 2021-04-30 |  | 2021-04-24 | 2021-04-30 | 20d | 85d |  | Barbara Ecole [20%] | 15h | 183.3 | 183.3 |  |
| 90 | 2.9.1.12 | Rédiger le retour d'expérience |  | 25d | 2021-04-16 | 2021-04-24 |  | 2021-04-16 | 2021-04-24 | 25d | 90d |  | Maxime Ecole [20%]; Melvin Ecole [20%]; Maximilien Ecole [20%]; Barbara Ecole [20%] | 62h | 757.64 | 757.64 |  |
| 91 | 2.9.2 | Préparer la soutenance |  | 30d | 2021-05-06 | 2021-05-15 | 78 | 2021-05-06 | 2021-05-15 | 30d | 86.5d |  | Maxime Ecole [20%]; Melvin Ecole [20%]; Maximilien Ecole [20%]; Barbara Ecole [20%] | 80h | 977.6 | 977.6 |  |
| 92 | 2.9.3 | Rédaction du livrable |  | 30d | 2021-05-15 | 2021-05-23 | 78 | 2021-05-15 | 2021-05-23 | 30d | 80d |  | Maxime Ecole [20%]; Melvin Ecole [20%]; Maximilien Ecole [20%]; Barbara Ecole [20%] | 100h | 1,222 | 1,222 |  |
| 93 | 2.10 | GO / NO GO FINAL : Livrable 4 | milestone, manual | 0d | 2021-06-30 | 2021-06-30 | 77 | 2021-06-30 | 2021-06-30 | 0d |  |  |  |  |  |  |  |
| 94 | 2.11 | **Développement** |  | 89d | 2021-06-30 | 2021-11-01 | 93 | 2021-06-30 | 2021-11-01 | 89d | 0d |  |  | 1308h | 39,240 | 39,240 |  |
| 95 | 2.11.1 | **Développer l'applicatif** |  | 42d | 2021-06-30 | 2021-08-26 |  | 2021-06-30 | 2021-08-26 | 42d | 29d | 0d |  | 630h | 18,900 | 18,900 |  |
| 96 | 2.11.1.1 | Consolider l'interface des commerciaux |  | 15.75d | 2021-07-19 | 2021-08-09 |  | 2021-07-19 | 2021-08-09 | 15.75d | 42.25d |  | Dev 2 [80%]; Dev 1 [80%]; Dev 3 [80%] | 210h | 6,300 | 6,300 |  |
| 97 | 2.11.1.2 | Développer l'interface du BE |  | 15d | 2021-06-30 | 2021-07-20 |  | 2021-06-30 | 2021-07-20 | 15d | 56d |  | Dev 2 [80%]; Dev 1 [80%]; Dev 3 [80%] | 210h | 6,300 | 6,300 |  |
| 98 | 2.11.1.3 | Développer l'interface d'administration |  | 16.5d | 2021-08-04 | 2021-08-26 |  | 2021-08-04 | 2021-08-26 | 16.5d | 29d |  | Dev 2 [80%]; Dev 1 [80%]; Dev 3 [80%] | 210h | 6,300 | 6,300 |  |
| 99 | 2.11.2 | GO/ NO GO Réunion de validation du développement | milestone | 0d | 2021-08-26 | 2021-08-26 | 95 | 2021-08-26 | 2021-08-26 | 0d | 47d |  |  |  |  |  |  |
| 100 | 2.11.3 | **Consolider la BDD** |  | 18d | 2021-08-23 | 2021-09-15 |  | 2021-08-23 | 2021-09-15 | 18d | 15d | 0d |  | 210h | 6,300 | 6,300 |  |
| 101 | 2.11.3.1 | Utilisateurs |  | 4d | 2021-08-23 | 2021-08-30 |  | 2021-08-23 | 2021-08-30 | 4d | 27d |  | Dev 2 [80%]; Dev 1 [80%]; Dev 3 [80%] | 30h | 900 | 900 |  |
| 102 | 2.11.3.2 | Client |  | 4d | 2021-08-25 | 2021-09-01 |  | 2021-08-25 | 2021-09-01 | 4d | 25d |  | Dev 2 [80%]; Dev 1 [80%]; Dev 3 [80%] | 30h | 900 | 900 |  |
| 103 | 2.11.3.3 | Fournisseur |  | 4d | 2021-08-27 | 2021-09-03 |  | 2021-08-27 | 2021-09-03 | 4d | 23d |  | Dev 2 [80%]; Dev 1 [80%]; Dev 3 [80%] | 30h | 900 | 900 |  |
| 104 | 2.11.3.4 | Projet |  | 4d | 2021-08-31 | 2021-09-07 |  | 2021-08-31 | 2021-09-07 | 4d | 21d |  | Dev 2 [80%]; Dev 1 [80%]; Dev 3 [80%] | 30h | 900 | 900 |  |
| 105 | 2.11.3.5 | Composants |  | 4d | 2021-09-02 | 2021-09-09 |  | 2021-09-02 | 2021-09-09 | 4d | 19d |  | Dev 2 [80%]; Dev 1 [80%]; Dev 3 [80%] | 30h | 900 | 900 |  |
| 106 | 2.11.3.6 | Modules |  | 4d | 2021-09-06 | 2021-09-13 |  | 2021-09-06 | 2021-09-13 | 4d | 17d |  | Dev 2 [80%]; Dev 1 [80%]; Dev 3 [80%] | 30h | 900 | 900 |  |
| 107 | 2.11.3.7 | Gammes |  | 4d | 2021-09-08 | 2021-09-15 |  | 2021-09-08 | 2021-09-15 | 4d | 15d |  | Dev 2 [80%]; Dev 1 [80%]; Dev 3 [80%] | 30h | 900 | 900 |  |

| ID | WBS | Task | Type | Duration | Start | Finish | Predecessors | Baseline start | Baseline finish | Baseline duration | Total slack | Free slack | Constraint | Resources | Work | Cost | Baseline cost |
| --- | --- | --- | --- | --- | --- | --- | --- | --- | --- | --- | --- | --- | --- | --- | --- | --- | --- |
| 108 | 2.11.4 | **Réaliser des scénarios de test** |  | 18d | 2021-09-16 | 2021-10-11 | 95, 100 | 2021-09-16 | 2021-10-11 | 18d | 15d | 0d |  |  | 255h | 7,650 | 7,650 |
| 109 | 2.11.4.1 | Réaliser les tests |  | 7d | 2021-09-16 | 2021-09-24 |  | 2021-09-16 | 2021-09-24 | 7d | 15d | 0d |  | Dev 2 [80%]; Dev 1 [80%]; Dev 3 [80%] | 105h | 3,150 | 3,150 |
| 110 | 2.11.4.2 | Corriger les bugs relevés |  | 7d | 2021-09-27 | 2021-10-05 | 109 | 2021-09-27 | 2021-10-05 | 7d | 15d | 0d |  | Dev 2 [80%]; Dev 1 [80%]; Dev 3 [80%] | 90h | 2,700 | 2,700 |
| 111 | 2.11.4.3 | Rejouer les tests |  | 4d | 2021-10-06 | 2021-10-11 | 110 | 2021-10-06 | 2021-10-11 | 4d | 15d |  |  | Dev 2 [80%]; Dev 1 [80%]; Dev 3 [80%] | 60h | 1,800 | 1,800 |
| 112 | 2.11.5 | **Rédiger la documentation technique** |  | 33d | 2021-09-10 | 2021-10-26 |  | 2021-09-10 | 2021-10-26 | 33d | 4d |  |  |  | 140h | 4,200 | 4,200 |
| 113 | 2.11.5.1 | Processus (Algorithme...) |  | 7d | 2021-10-12 | 2021-10-20 |  | 2021-10-12 | 2021-10-20 | 7d | 8d |  |  | Dev 1 [80%] | 35h | 1,050 | 1,050 |
| 114 | 2.11.5.2 | Doc de maintenance |  | 7d | 2021-10-12 | 2021-10-20 |  | 2021-10-12 | 2021-10-20 | 7d | 8d |  |  | Dev 2 [80%] | 35h | 1,050 | 1,050 |
| 115 | 2.11.5.3 | Mise à jour de la documentation UML |  | 7d | 2021-09-10 | 2021-10-14 |  | 2021-09-10 | 2021-10-14 | 7d | 12d |  |  | Dev 3 [80%] | 35h | 1,050 | 1,050 |
| 116 | 2.11.5.4 | Nomenclature |  | 4d | 2021-10-21 | 2021-10-26 |  | 2021-10-21 | 2021-10-26 | 4d | 4d |  |  | Dev 1 [80%] | 20h | 600 | 600 |
| 117 | 2.11.5.5 | Glossaire |  | 3d | 2021-10-21 | 2021-10-25 |  | 2021-10-21 | 2021-10-25 | 3d | 5d |  |  | Dev 2 [80%] | 15h | 450 | 450 |
| 118 | 2.11.6 | GO / NO GO Réunion de validation du projet | milestone | 0d | 2021-10-11 | 2021-10-11 | 108 | 2021-10-11 | 2021-10-11 | 0d | 15d |  |  |  |  |  |  |
| 119 | 2.11.7 | **Rédiger les manuels d'utilisation** |  | 12d | 2021-10-15 | 2021-11-01 |  | 2021-10-15 | 2021-11-01 | 12d | 0d |  |  |  | 73h | 2,190 | 2,190 |
| 120 | 2.11.7.1 | Introduction à l'application |  | 2d | 2021-10-27 | 2021-10-28 |  | 2021-10-27 | 2021-10-28 | 2d | 2d |  |  | Dev 1 [80%] | 8h | 240 | 240 |
| 121 | 2.11.7.2 | Création et gestion des devis |  | 3d | 2021-10-26 | 2021-10-28 |  | 2021-10-26 | 2021-10-28 | 3d | 2d |  |  | Dev 2 [80%] | 16h | 480 | 480 |
| 122 | 2.11.7.3 | Création et gestion des modules |  | 2d | 2021-10-25 | 2021-10-26 |  | 2021-10-25 | 2021-10-26 | 2d | 4d |  |  | Dev 3 [80%] | 8h | 240 | 240 |
| 123 | 2.11.7.4 | Création et gestion des composants |  | 2d | 2021-10-29 | 2021-11-01 |  | 2021-10-29 | 2021-11-01 | 2d | 0d |  |  | Dev 1 [80%] | 8h | 240 | 240 |
| 124 | 2.11.7.5 | Création et gestion des gammes |  | 2d | 2021-10-29 | 2021-11-01 |  | 2021-10-29 | 2021-11-01 | 2d | 0d |  |  | Dev 2 [80%] | 8h | 240 | 240 |
| 125 | 2.11.7.6 | Doc d'administration |  | 6d | 2021-10-15 | 2021-10-22 |  | 2021-10-15 | 2021-10-22 | 6d | 6d |  |  | Dev 3 [80%] | 25h | 750 | 750 |
| 126 | 2.12 | **Mise en production** |  | 28d | 2021-11-02 | 2021-12-09 | 94 | 2021-11-02 | 2021-12-09 | 28d |  |  |  |  | 207h | 6,210 | 6,210 |
| 127 | 2.12.1 | Installer le système sur les tablettes |  | 14d | 2021-11-02 | 2021-11-19 |  | 2021-11-02 | 2021-11-19 | 14d | 0d |  |  | Dev 1 [80%]; Dev 2 [80%] | 100h | 3,000 | 3,000 |
| 128 | 2.12.2 | **Proposer des formations** |  | 14d | 2021-11-22 | 2021-12-09 | 127 | 2021-11-22 | 2021-12-09 | 14d | 0d |  |  |  | 107h | 3,210 | 3,210 |
| 129 | 2.12.2.1 | Aux commerciaux |  | 14d | 2021-11-22 | 2021-12-09 |  | 2021-11-22 | 2021-12-09 | 14d | 0d |  |  | Dev 1 [80%] | 70h | 2,100 | 2,100 |
| 130 | 2.12.2.2 | A l'équipe BE |  | 2d | 2021-11-24 | 2021-11-26 |  | 2021-11-24 | 2021-11-26 | 2d | 9.32d |  |  | Dev 2 [80%] | 7h | 210 | 210 |
| 131 | 2.12.2.3 | A l'équipe IT |  | 4d | 2021-11-22 | 2021-11-25 |  | 2021-11-22 | 2021-11-25 | 4d | 10d |  |  | Dev 3 [80%]; Dev 2 [80%] | 30h | 900 | 900 |
| 132 | 2.13 | Livrable Final (Mise en production de l'application) | milestone, manual | 0d | 2021-12-10 | 2021-12-10 | 126 | 2021-09-27 | 2021-09-27 | 0d |  |  | start no earlier than 2021-09-27 |  |  |  |  |
| 133 | 2.14 | Assurer la maintenance |  | 262d | 2021-12-10 | 2022-12-12 | 126 | 2021-12-10 | 2022-12-12 | 262d | 0d |  |  | Dev 1 [50%] | 1278h | 38,340 | 38,340 |
| 134 | 3 | Fin projet | milestone | 0d | 2022-12-12 | 2022-12-12 | 133 | 2022-12-12 | 2022-12-12 | 0d | 0d |  |  |  |  |  |  |
